# Celeris Edge — Plan de gestión del proyecto

Schedule from MS Project, 2026-11-18 to 2027-06-18, status date 2026-11-25, costs in US$, A marks actual dates.
Universidad Peruana Unión — Campus Juliaca

## Calendars

- Calendario del proyecto Celeris: Mon-Fri 08:00-12:00, 13:00-17:00; Sat-Sun off. Exceptions (off unless hours are given): 2026-12-08 (Feriado nacional (Inmaculada Concepción)), 2026-12-21 to 2027-02-26 (Receso entre semestres [confirmar con el calendario académico]), 2027-03-25 to 2027-03-26 (Feriado nacional (Jueves y Viernes Santo)).

## Resources

| Resource | Rate |
| --- | --- |
| Nick Saim Mayta Jara (líder técnico) | 5 |
| Henyelrey Lucio Garcia Chura (director del proyecto) | 5 |
| DTI (administradores de infraestructura) |  |
| Encargados de laboratorio |  |
| Docente del curso (revisión) |  |

## Schedule

| ID | WBS | Task | Type | Duration | Start | Finish | Predecessors | Complete | Remaining | Baseline start | Baseline finish | Baseline duration | Total slack | Free slack | Constraint | Resources | Work | Cost | Baseline cost | Actual cost |
| --- | --- | --- | --- | --- | --- | --- | --- | --- | --- | --- | --- | --- | --- | --- | --- | --- | --- | --- | --- | --- |
| 1 | H | **Hitos del proyecto** |  | 100d | 2026-11-18 A | 2027-06-18 |  |  | 100d |  |  |  | 0d |  |  |  |  |  |  |  |
| 2 | H0 | H0 Inicio del proyecto | milestone | 0d | 2026-11-18 A | 2026-11-18 A |  | 100% |  | 2026-11-18 | 2026-11-18 | 0d |  |  |  |  |  |  |  |  |
| 3 | H1 | H1 Sustentación de S1 | milestone | 0d | 2026-12-18 | 2026-12-18 | 74 |  |  | 2026-12-18 | 2026-12-18 | 0d | 0d |  |  |  |  |  |  |  |
| 4 | HS2 | HS2 Inicio de S2 | milestone | 0d | 2027-03-01 | 2027-03-01 | 3 |  |  | 2027-03-01 | 2027-03-01 | 0d | 0d |  | start no earlier than 2027-03-01 |  |  |  |  |  |
| 5 | H2 | H2 Aprobación de la DTI para el piloto | milestone | 0d | 2027-03-05 | 2027-03-05 | 66 |  |  | 2027-03-05 | 2027-03-05 | 0d | 15d | 0d |  |  |  |  |  |  |
| 6 | H3 | H3 Decisión de ampliación | milestone | 0d | 2027-05-28 | 2027-05-28 | 69 |  |  | 2027-05-28 | 2027-05-28 | 0d | 0d |  |  |  |  |  |  |  |
| 7 | H4 | H4 Sustentación final y cierre | milestone | 0d | 2027-06-18 | 2027-06-18 | 75 |  |  | 2027-06-18 | 2027-06-18 | 0d | 0d |  |  |  |  |  |  |  |
| 8 | 1 | **1 Gestión del proyecto** |  | 93d | 2026-11-26 | 2027-06-17 |  |  |  |  |  |  | 1d |  |  |  | 49h | 240 |  |  |
| 9 | 1.1 | **1.1 Acta** |  | 2d | 2026-12-02 | 2026-12-03 |  |  |  |  |  |  | 3d |  |  |  | 3h | 10 |  |  |
| 10 | 1.1.1 | 1.1.1 Revisión y firma del acta de constitución |  | 2d | 2026-12-02 | 2026-12-03 | 27 |  |  | 2026-12-07 | 2026-12-09 | 2d | 3d | 0d |  | Henyelrey Lucio Garcia Chura (director del proyecto) [12.5%]; Docente del curso (revisión) [6.2%] | 3h | 10 | 10 |  |
| 11 | 1.2 | **1.2 Plan** |  | 1d | 2026-12-04 | 2026-12-04 |  |  |  |  |  |  | 3d |  |  |  | 2h | 10 |  |  |
| 12 | 1.2.1 | 1.2.1 Aprobación del plan y registro de la línea base |  | 1d | 2026-12-04 | 2026-12-04 | 10 |  |  | 2026-12-10 | 2026-12-10 | 1d | 3d |  |  | Henyelrey Lucio Garcia Chura (director del proyecto) [12.5%]; Nick Saim Mayta Jara (líder técnico) [12.5%] | 2h | 10 | 10 |  |
| 13 | 1.3 | **1.3 Seguimiento** |  | 93d | 2026-11-26 | 2027-06-17 |  |  |  |  |  |  | 1d |  |  |  | 38h | 190 |  |  |
| 14 | 1.3.1 | 1.3.1 Seguimiento semanal de S1 |  | 15d | 2026-11-26 | 2026-12-17 | 2 |  |  | 2026-11-18 | 2026-12-09 | 15d | 79d |  | start no earlier than 2026-11-26 | Henyelrey Lucio Garcia Chura (director del proyecto) [2.5%]; Nick Saim Mayta Jara (líder técnico) [2.5%] | 6h | 30 | 30 |  |
| 15 | 1.3.2 | 1.3.2 Seguimiento semanal de S2 |  | 77d | 2027-03-01 | 2027-06-17 | 4 |  |  | 2027-03-01 | 2027-06-17 | 77d | 1d |  |  | Henyelrey Lucio Garcia Chura (director del proyecto) [2.6%]; Nick Saim Mayta Jara (líder técnico) [2.6%] | 32h | 160 | 160 |  |
| 16 | 1.4 | **1.4 Lecciones aprendidas** |  | 2d | 2027-06-14 | 2027-06-15 |  |  |  |  |  |  | 1d |  |  |  | 6h | 30 |  |  |
| 17 | 1.4.1 | 1.4.1 Lecciones aprendidas y cierre administrativo |  | 2d | 2027-06-14 | 2027-06-15 | 71 |  |  | 2027-06-14 | 2027-06-15 | 2d | 1d |  |  | Henyelrey Lucio Garcia Chura (director del proyecto) [18.8%]; Nick Saim Mayta Jara (líder técnico) [18.8%] | 6h | 30 | 30 |  |
| 18 | 2 | **2 Gestión de TI** |  | 11d | 2026-11-25 A | 2026-12-10 |  | 8% | 10.12d |  |  |  | 0d |  |  |  | 79h | 520 |  | 180 |
| 19 | 2.1 | **2.1 Diagnóstico** |  | 8d | 2026-11-25 A | 2026-12-04 |  | 13% | 7d |  |  |  | 3d |  |  |  | 23h | 170 |  | 90 |
| 20 | 2.1.1 | 2.1.1 Diagnóstico organizacional e informe E1 |  | 1d | 2026-11-25 A | 2026-11-25 A | 2 | 100% |  | 2026-11-18 | 2026-11-24 | 5d |  |  |  |  |  | 90 | 90 | 90 |
| 21 | 2.1.2 | 2.1.2 Levantamiento con la DTI y los encargados |  | 5d | 2026-11-26 | 2026-12-02 | 20 |  |  | 2026-11-25 | 2026-12-01 | 5d | 0d |  |  | Henyelrey Lucio Garcia Chura (director del proyecto) [25%]; DTI (administradores de infraestructura) [10%]; Encargados de laboratorio [7.5%] | 17h | 50 | 50 |  |
| 22 | 2.1.3 | 2.1.3 Actualización del E1 con los datos levantados |  | 2d | 2026-12-03 | 2026-12-04 | 21 |  |  | 2026-12-02 | 2026-12-03 | 2d | 3d |  |  | Henyelrey Lucio Garcia Chura (director del proyecto) [37.5%] | 6h | 30 | 30 |  |
| 23 | 2.2 | **2.2 Business case** |  | 8d | 2026-11-25 A | 2026-12-04 |  | 33% | 5.33d |  |  |  | 3d |  |  |  | 4h | 110 |  | 90 |
| 24 | 2.2.1 | 2.2.1 Business case e informe E2 |  | 1d | 2026-11-25 A | 2026-11-25 A | 20 | 100% |  | 2026-11-25 | 2026-11-30 | 4d |  |  |  |  |  | 90 | 90 | 90 |
| 25 | 2.2.2 | 2.2.2 Actualización del E2 con la cotización del ISP |  | 2d | 2026-12-03 | 2026-12-04 | 21, 24 |  |  | 2026-12-02 | 2026-12-03 | 2d | 3d |  |  | Henyelrey Lucio Garcia Chura (director del proyecto) [25%] | 4h | 20 | 20 |  |

Notes:
- 2: Terminado: commit 3aeec9e del 2026-11-18 (main).
- 20: Terminado: commit 79505c4 del 2026-11-25 (main). Trabajo: Henyelrey 16 h, Nick 2 h (costo registrado como costo fijo: horas del equipo × tarifa S-07).
- 24: Terminado: commit eb5fedd del 2026-11-25 (main). Trabajo: Henyelrey 16 h, Nick 2 h (costo registrado como costo fijo: horas del equipo × tarifa S-07).

| ID | WBS | Task | Duration | Start | Finish | Predecessors | Complete | Remaining | Baseline start | Baseline finish | Baseline duration | Total slack | Free slack | Resources | Work | Cost | Baseline cost | Actual cost |
| --- | --- | --- | --- | --- | --- | --- | --- | --- | --- | --- | --- | --- | --- | --- | --- | --- | --- | --- |
| 26 | 2.3 | **2.3 Plan de gestión** | 4d | 2026-11-26 | 2026-12-01 |  |  |  |  |  |  | 3d |  |  | 20h | 100 |  |  |
| 27 | 2.3.1 | 2.3.1 Plan de gestión e informe E3 | 4d | 2026-11-26 | 2026-12-01 | 24 |  |  | 2026-12-01 | 2026-12-04 | 4d | 3d | 0d | Henyelrey Lucio Garcia Chura (director del proyecto) [50%]; Nick Saim Mayta Jara (líder técnico) [12.5%] | 20h | 100 | 100 |  |
| 28 | 2.4 | **2.4 AS-IS / TO-BE** | 10d | 2026-11-26 | 2026-12-10 |  |  |  |  |  |  | 0d |  |  | 32h | 140 |  |  |
| 29 | 2.4.1 | 2.4.1 Modelado AS-IS / TO-BE e informe E4 | 5d | 2026-11-26 | 2026-12-02 | 20 |  |  | 2026-11-25 | 2026-12-01 | 5d | 3d |  | Henyelrey Lucio Garcia Chura (director del proyecto) [40%]; Nick Saim Mayta Jara (líder técnico) [5%] | 18h | 90 | 90 |  |
| 30 | 2.4.2 | 2.4.2 Cronometraje de un ciclo real (≥ 30 observaciones) | 3d | 2026-12-03 | 2026-12-07 | 21 |  |  | 2026-12-02 | 2026-12-04 | 3d | 0d |  | Henyelrey Lucio Garcia Chura (director del proyecto) [25%]; Encargados de laboratorio [16.7%] | 10h | 30 | 30 |  |
| 31 | 2.4.3 | 2.4.3 Actualización del E4 con las mediciones | 2d | 2026-12-09 | 2026-12-10 | 29, 30 |  |  | 2026-12-07 | 2026-12-09 | 2d | 0d |  | Henyelrey Lucio Garcia Chura (director del proyecto) [25%] | 4h | 20 | 20 |  |
| 32 | 3 | **3 Ingeniería de software** | 13d | 2026-11-19 A | 2026-12-07 |  | 82% | 2.29d |  |  |  | 2d |  |  | 10h | 300 |  | 270 |
| 33 | 3.1 | **3.1 SRS** | 4d | 2026-11-19 A | 2026-11-24 A |  | 100% |  |  |  |  |  |  |  |  | 90 |  | 90 |
| 34 | 3.1.1 | 3.1.1 SRS v0.4 (REQ-F, REQ-NF y casos de uso) | 4d | 2026-11-19 A | 2026-11-24 A | 2 | 100% |  | 2026-11-18 | 2026-11-24 | 5d |  |  |  |  | 90 | 90 | 90 |
| 35 | 3.2 | **3.2 Prototipo de la consola validado** | 13d | 2026-11-19 A | 2026-12-07 |  | 57% | 5.57d |  |  |  | 2d |  |  | 10h | 100 |  | 70 |
| 36 | 3.2.1 | 3.2.1 Prototipo navegable de la consola | 4d | 2026-11-19 A | 2026-11-24 A | 34SS+1d | 100% |  | 2026-11-19 | 2026-11-25 | 5d |  |  |  |  | 70 | 70 | 70 |
| 37 | 3.2.2 | 3.2.2 Validación del prototipo con encargados (SUS) | 3d | 2026-12-03 | 2026-12-07 | 36, 21 |  |  | 2026-12-02 | 2026-12-04 | 3d | 2d |  | Nick Saim Mayta Jara (líder técnico) [25%]; Encargados de laboratorio [16.7%] | 10h | 30 | 30 |  |
| 38 | 3.3 | **3.3 C4 + ADR** | 1d | 2026-11-24 A | 2026-11-24 A |  | 100% |  |  |  |  |  |  |  |  | 40 |  | 40 |
| 39 | 3.3.1 | 3.3.1 Modelo C4 y ADR | 1d | 2026-11-24 A | 2026-11-24 A | 34 | 100% |  | 2026-11-25 | 2026-11-27 | 3d |  |  |  |  | 40 | 40 | 40 |
| 40 | 3.4 | **3.4 UML** | 4d | 2026-11-19 A | 2026-11-24 A |  | 100% |  |  |  |  |  |  |  |  | 50 |  | 50 |
| 41 | 3.4.1 | 3.4.1 Diagramas UML por caso de uso | 4d | 2026-11-19 A | 2026-11-24 A | 34SS+1d | 100% |  | 2026-11-19 | 2026-11-24 | 4d |  |  |  |  | 50 | 50 | 50 |
| 42 | 3.5 | **3.5 Trazabilidad** | 1d | 2026-11-24 A | 2026-11-24 A |  | 100% |  |  |  |  |  |  |  |  | 20 |  | 20 |
| 43 | 3.5.1 | 3.5.1 Matriz de trazabilidad | 1d | 2026-11-24 A | 2026-11-24 A | 39, 41 | 100% |  | 2026-11-30 | 2026-12-01 | 2d |  |  |  |  | 20 | 20 | 20 |
| 44 | 4 | **4 Infraestructura** | 5d | 2026-11-18 A | 2026-11-24 A |  | 100% |  |  |  |  |  |  |  |  | 400 |  | 400 |
| 45 | 4.1 | **4.1 Diseño de red** | 5d | 2026-11-18 A | 2026-11-24 A |  | 100% |  |  |  |  |  |  |  |  | 200 |  | 200 |
| 46 | 4.1.1 | 4.1.1 Diseño de red e informe CE0311 | 5d | 2026-11-18 A | 2026-11-24 A | 50SS+2d | 100% |  | 2026-11-20 | 2026-12-03 | 10d |  |  |  |  | 200 | 200 | 200 |
| 47 | 4.2 | **4.2 Diseño de centro de datos** | 2d | 2026-11-23 A | 2026-11-24 A |  | 100% |  |  |  |  |  |  |  |  | 170 |  | 170 |
| 48 | 4.2.1 | 4.2.1 Diseño del centro de datos e informe CE0331 | 2d | 2026-11-23 A | 2026-11-24 A | 46SS+5d | 100% |  | 2026-11-27 | 2026-12-09 | 8d |  |  |  |  | 170 | 170 | 170 |
| 49 | 4.3 | **4.3 Inventario único de red** | 3d | 2026-11-18 A | 2026-11-20 A |  | 100% |  |  |  |  |  |  |  |  | 30 |  | 30 |
| 50 | 4.3.1 | 4.3.1 Inventario único de red v0.4 | 3d | 2026-11-18 A | 2026-11-20 A | 2 | 100% |  | 2026-11-18 | 2026-11-23 | 4d |  |  |  |  | 30 | 30 | 30 |

Notes:
- 34: Terminado: commit 5d8e77f del 2026-11-24 (main). Trabajo: Nick 14 h, Henyelrey 4 h (costo registrado como costo fijo: horas del equipo × tarifa S-07).
- 36: Terminado: commit aa3b8e5 del 2026-11-24 (main). Trabajo: Nick 14 h (costo registrado como costo fijo: horas del equipo × tarifa S-07).
- 39: Terminado: commit 5d8e77f del 2026-11-24 (main). Trabajo: Nick 8 h (costo registrado como costo fijo: horas del equipo × tarifa S-07).
- 41: Terminado: commit aa3b8e5 del 2026-11-24 (main). Trabajo: Nick 10 h (costo registrado como costo fijo: horas del equipo × tarifa S-07).
- 43: Terminado: commit 5d8e77f del 2026-11-24 (main). Trabajo: Nick 4 h (costo registrado como costo fijo: horas del equipo × tarifa S-07).
- 46: Terminado: commit 55f248d del 2026-11-24 (main). Trabajo: Henyelrey 36 h, Nick 4 h (costo registrado como costo fijo: horas del equipo × tarifa S-07).
- 48: Terminado: commit 55f248d del 2026-11-24 (main). Trabajo: Nick 30 h, Henyelrey 4 h (costo registrado como costo fijo: horas del equipo × tarifa S-07).
- 50: Terminado: commit dd53542 del 2026-11-22 (main). Trabajo: Nick 6 h (costo registrado como costo fijo: horas del equipo × tarifa S-07).

| ID | WBS | Task | Duration | Start | Finish | Predecessors | Complete | Remaining | Baseline start | Baseline finish | Baseline duration | Total slack | Free slack | Constraint | Resources | Work | Cost | Baseline cost | Actual cost |
| --- | --- | --- | --- | --- | --- | --- | --- | --- | --- | --- | --- | --- | --- | --- | --- | --- | --- | --- | --- |
| 51 | 5 | **5 Prueba de concepto** | 95d | 2026-11-18 A | 2027-06-11 |  | 9% | 86.04d |  |  |  | 0d |  |  |  | 303h | 6,961.1 |  | 180 |
| 52 | 5.1 | **5.1 Nodo de caché + PAC** | 42d | 2026-11-18 A | 2027-03-30 |  | 17% | 35d |  |  |  | 15d |  |  |  | 18h | 5,440 |  | 80 |
| 53 | 5.1.1 | 5.1.1 Nodo de caché, PAC y configuración firmada | 3d | 2026-11-18 A | 2026-11-20 A | 2 | 100% |  | 2026-11-18 | 2026-11-24 | 5d |  |  |  |  |  | 80 | 80 | 80 |
| 54 | 5.1.2 | 5.1.2 Adquisición e instalación del hardware del rack | 15d | 2027-03-08 | 2027-03-30 | 5 |  |  | 2027-03-08 | 2027-03-30 | 15d | 15d |  |  | Nick Saim Mayta Jara (líder técnico) [6.7%]; Henyelrey Lucio Garcia Chura (director del proyecto) [3.3%]; DTI (administradores de infraestructura) [5%] | 18h | 5,360 | 5,360 |  |
| 55 | 5.2 | **5.2 Laboratorio emulado** | 9d | 2026-11-18 A | 2026-11-30 |  | 57% | 3.86d |  |  |  | 7d |  |  |  | 4h | 80 |  | 60 |
| 56 | 5.2.1 | 5.2.1 Laboratorio emulado (Modo L) y ensayo v0.4 | 4d | 2026-11-18 A | 2026-11-23 A | 50 | 100% |  | 2026-11-24 | 2026-12-01 | 6d |  |  |  |  |  | 60 | 60 | 60 |
| 57 | 5.2.2 | 5.2.2 Cierre de la prueba crítica pendiente T58 | 3d | 2026-11-26 | 2026-11-30 | 56 |  |  | 2026-12-02 | 2026-12-04 | 3d | 7d | 0d | start no earlier than 2026-11-26 | Nick Saim Mayta Jara (líder técnico) [16.7%] | 4h | 20 | 20 |  |
| 58 | 5.3 | **5.3 IaC AWS** | 3d | 2026-11-19 A | 2026-11-23 A |  | 100% |  |  |  |  |  |  |  |  |  | 40 |  | 40 |
| 59 | 5.3.1 | 5.3.1 IaC de AWS contra el emulador | 3d | 2026-11-19 A | 2026-11-23 A | 50 | 100% |  | 2026-11-24 | 2026-11-27 | 4d |  |  |  |  |  | 40 | 40 | 40 |
| 60 | 5.4 | **5.4 Consola del encargado** | 35d | 2027-03-01 | 2027-04-20 |  |  |  |  |  |  | 0d |  |  |  | 166h | 810 |  |  |
| 61 | 5.4.1 | 5.4.1 Sprints 1–2: autenticación, auditoría y catálogo | 10d | 2027-03-01 | 2027-03-12 | 4 |  |  | 2027-03-01 | 2027-03-12 | 10d | 0d |  |  | Nick Saim Mayta Jara (líder técnico) [50%]; Henyelrey Lucio Garcia Chura (director del proyecto) [12.5%] | 50h | 250 | 250 |  |
| 62 | 5.4.2 | 5.4.2 Sprints 3–4: laboratorios, configuración firmada y precargas | 10d | 2027-03-15 | 2027-03-30 | 61 |  |  | 2027-03-15 | 2027-03-30 | 10d | 0d |  |  | Nick Saim Mayta Jara (líder técnico) [50%]; Henyelrey Lucio Garcia Chura (director del proyecto) [12.5%] | 50h | 250 | 250 |  |
| 63 | 5.4.3 | 5.4.3 Sprints 5–6: ahorro, portal y solicitudes | 10d | 2027-03-31 | 2027-04-13 | 62 |  |  | 2027-03-31 | 2027-04-13 | 10d | 0d |  |  | Nick Saim Mayta Jara (líder técnico) [50%]; Henyelrey Lucio Garcia Chura (director del proyecto) [12.5%] | 50h | 250 | 250 |  |
| 64 | 5.4.4 | 5.4.4 Pruebas de aceptación de la consola con encargados | 5d | 2027-04-14 | 2027-04-20 | 63 |  |  | 2027-04-14 | 2027-04-20 | 5d | 0d |  |  | Nick Saim Mayta Jara (líder técnico) [20%]; Henyelrey Lucio Garcia Chura (director del proyecto) [10%]; Encargados de laboratorio [10%] | 16h | 60 | 60 |  |
| 65 | 5.5 | **5.5 Piloto en un laboratorio** | 63d | 2027-03-01 | 2027-05-28 |  |  |  |  |  |  | 0d |  |  |  | 72h | 431.1 |  |  |
| 66 | 5.5.1 | 5.5.1 Aprobación de la DTI y pedidos del FortiGate (S-29) | 5d | 2027-03-01 | 2027-03-05 | 4 |  |  | 2027-03-01 | 2027-03-05 | 5d | 15d | 0d |  | Henyelrey Lucio Garcia Chura (director del proyecto) [15%]; DTI (administradores de infraestructura) [10%] | 10h | 30 | 30 |  |
| 67 | 5.5.2 | 5.5.2 Despliegue en el laboratorio piloto y simulacro T59 | 5d | 2027-04-21 | 2027-04-27 | 64, 54 |  |  | 2027-04-21 | 2027-04-27 | 5d | 0d |  |  | Nick Saim Mayta Jara (líder técnico) [30%]; Henyelrey Lucio Garcia Chura (director del proyecto) [20%]; DTI (administradores de infraestructura) [10%] | 24h | 101.94 | 101.94 |  |
| 68 | 5.5.3 | 5.5.3 Operación y medición del piloto (BHR, tiempos, SUS) | 20d | 2027-04-28 | 2027-05-25 | 67 |  |  | 2027-04-28 | 2027-05-25 | 20d | 0d |  |  | Nick Saim Mayta Jara (líder técnico) [6.2%]; Henyelrey Lucio Garcia Chura (director del proyecto) [6.2%]; Encargados de laboratorio [3.8%] | 26h | 239.16 | 239.16 |  |
| 69 | 5.5.4 | 5.5.4 Informe del piloto y recomendación | 3d | 2027-05-26 | 2027-05-28 | 68 |  |  | 2027-05-26 | 2027-05-28 | 3d | 0d |  |  | Henyelrey Lucio Garcia Chura (director del proyecto) [33.3%]; Nick Saim Mayta Jara (líder técnico) [16.7%] | 12h | 60 | 60 |  |
| 70 | 5.6 | **5.6 Ampliación a los laboratorios** | 10d | 2027-05-31 | 2027-06-11 |  |  |  |  |  |  | 0d |  |  |  | 43h | 160 |  |  |
| 71 | 5.6.1 | 5.6.1 Ampliación a los 10 laboratorios | 10d | 2027-05-31 | 2027-06-11 | 6 |  |  | 2027-05-31 | 2027-06-11 | 10d | 0d |  |  | Nick Saim Mayta Jara (líder técnico) [20%]; Henyelrey Lucio Garcia Chura (director del proyecto) [20%]; DTI (administradores de infraestructura) [7.5%]; Encargados de laboratorio [6.2%] | 43h | 160 | 160 |  |
| 72 | 6 | **6 Cierre y sustentación** | 91d | 2026-12-01 | 2027-06-18 |  |  |  |  |  |  | 0d |  |  |  | 56h | 280 |  |  |
| 73 | 6.1 | **6.1 Ensayos** | 81d | 2026-12-16 | 2027-06-18 |  |  |  |  |  |  | 0d |  |  |  | 16h | 80 |  |  |
| 74 | 6.1.1 | 6.1.1 Ensayos de la sustentación de S1 | 3d | 2026-12-16 | 2026-12-18 | 80, 77 |  |  | 2026-12-16 | 2026-12-18 | 3d | 0d |  |  | Henyelrey Lucio Garcia Chura (director del proyecto) [16.7%]; Nick Saim Mayta Jara (líder técnico) [16.7%] | 8h | 40 | 40 |  |
| 75 | 6.1.2 | 6.1.2 Ensayos de la sustentación final | 2d | 2027-06-17 | 2027-06-18 | 81, 78, 17 |  |  | 2027-06-17 | 2027-06-18 | 2d | 0d |  |  | Henyelrey Lucio Garcia Chura (director del proyecto) [25%]; Nick Saim Mayta Jara (líder técnico) [25%] | 8h | 40 | 40 |  |

Notes:
- 53: Terminado: commit 6c2aa75 del 2026-11-22 (main). Trabajo: Nick 16 h (costo registrado como costo fijo: horas del equipo × tarifa S-07).
- 54: Costo fijo: capex (gestion/e3/plan.py).
- 56: Terminado: commit 00ef044 del 2026-11-23 (main). Trabajo: Nick 12 h (costo registrado como costo fijo: horas del equipo × tarifa S-07).
- 59: Terminado: commit 1cd4998 del 2026-11-23 (main). Trabajo: Nick 8 h (costo registrado como costo fijo: horas del equipo × tarifa S-07).
- 67: Costo fijo: aws_efimero (gestion/e3/plan.py).
- 68: Costo fijo: aws_24x7 (gestion/e3/plan.py).

| ID | WBS | Task | Duration | Start | Finish | Predecessors | Baseline start | Baseline finish | Baseline duration | Total slack | Resources | Work | Cost | Baseline cost |
| --- | --- | --- | --- | --- | --- | --- | --- | --- | --- | --- | --- | --- | --- | --- |
| 76 | 6.2 | **6.2 Demo grabada** | 78d | 2026-12-01 | 2027-06-01 |  |  |  |  | 8d |  | 8h | 40 |  |
| 77 | 6.2.1 | 6.2.1 Demo grabada del laboratorio emulado | 2d | 2026-12-01 | 2026-12-02 | 57 | 2026-12-07 | 2026-12-09 | 2d | 8d | Nick Saim Mayta Jara (líder técnico) [25%] | 4h | 20 | 20 |
| 78 | 6.2.2 | 6.2.2 Demo grabada del piloto | 2d | 2027-05-31 | 2027-06-01 | 69 | 2027-05-31 | 2027-06-01 | 2d | 11d | Nick Saim Mayta Jara (líder técnico) [25%] | 4h | 20 | 20 |
| 79 | 6.3 | **6.3 Expediente PDF** | 82d | 2026-12-11 | 2027-06-16 |  |  |  |  | 0d |  | 32h | 160 |  |
| 80 | 6.3.1 | 6.3.1 Expediente consolidado de S1 | 3d | 2026-12-11 | 2026-12-15 | 12, 22, 25, 31, 37, 43, 48, 57, 59 | 2026-12-11 | 2026-12-15 | 3d | 0d | Henyelrey Lucio Garcia Chura (director del proyecto) [33.3%]; Nick Saim Mayta Jara (líder técnico) [33.3%] | 16h | 80 | 80 |
| 81 | 6.3.2 | 6.3.2 Expediente final del proyecto | 3d | 2027-06-14 | 2027-06-16 | 71 | 2027-06-14 | 2027-06-16 | 3d | 0d | Henyelrey Lucio Garcia Chura (director del proyecto) [33.3%]; Nick Saim Mayta Jara (líder técnico) [33.3%] | 16h | 80 | 80 |
